How a schedule from an exported table changed from version to version. A marks actual dates.

## Version 1 (saved 2026-10-25)

Note of the change: chore: add FYP plans, progress tracking, academic drafts and CI

| Task | Start | Finish |
| --- | --- | --- |
| Define request/task/result schemas plus business-profile and capability contracts | 2026-10-26 | 2026-10-26 |
| Review shared sample payloads and first end-to-end scenario | 2026-10-29 | 2026-10-29 |
| Create FastAPI skeleton and typed profile validation with unknown-capability rejection | 2026-11-02 | 2026-11-02 |
| Add backend lint/tests and authenticated demo identity foundation | 2026-11-05 | 2026-11-05 |
| Implement conversation/message persistence | 2026-11-09 | 2026-11-09 |
| Verify history reload and denied cross-customer access | 2026-11-12 | 2026-11-12 |
| Build reviewed-document chunking and ingestion | 2026-11-16 | 2026-11-16 |
| Verify profile-scoped retrieval | Wasam-W04-A | 1 |
| Implement intake with structured intent output | 2026-11-23 | 2026-11-23 |
| Run supervisor with fake workers and dependency-aware routing | 2026-11-26 | 2026-11-26 |
| Review state schemas and Chapter 1 draft; light mids session | 2026-11-30 | 2026-11-30 |
| Document worker/RAG interfaces and test one invalid payload; light session | 2026-12-03 | 2026-12-03 |
| Review RAG evidence and failure cases; light mids session | 2026-12-07 | 2026-12-07 |
| Update architecture notes and fix a small test; light session | 2026-12-10 | 2026-12-10 |
| Connect domain workers through adapters | 2026-12-14 | 2026-12-14 |
| Verify support-plus-quote routing and independent task overlap | 2026-12-17 | 2026-12-17 |
| Persist customer/admin waiting states | 2026-12-21 | 2026-12-21 |
| Connect approval result and resume without losing completed tasks | 2026-12-24 | 2026-12-24 |
| Connect authorized execution receipts to final response | 2026-12-28 | 2026-12-28 |
| Run real backend journey and verify restart/duplicate-request behavior | 2026-12-31 | 2026-12-31 |
| Support frontend integration and fix contract defects | 2027-01-04 | 2027-01-04 |
| Freeze backend scope; verify same core with Profiles A/B and disabled booking | 2027-01-07 | 2027-01-07 |
| Run fresh-setup integration and finalize Chapter 1 material | 2027-01-11 | 2027-01-11 |
| Rehearse explanation of graph/RAG; fix only release-blocking defects | 2027-01-14 | 2027-01-14 |
| Define profile-driven policy matrix and approval/consent requirements | 2026-10-26 | 2026-10-26 |
| Agree proposal/receipt contracts and safety examples | 2026-10-29 | 2026-10-29 |
| Implement Decimal quote service using configured catalog/currency/policy | 2026-11-02 | 2026-11-02 |
| Test price differences, invalid discounts and missing catalog values | 2026-11-05 | 2026-11-05 |
| Implement proposal validation with fake data adapter | 2026-11-09 | 2026-11-09 |
| Test denied, stale and malformed proposals | 2026-11-12 | 2026-11-12 |
| Add proposal/confirmation/approval data models and migrations | 2026-11-16 | 2026-11-16 |
| Verify approval is bound to exact proposal version | 2026-11-19 | 2026-11-19 |
| Implement approve/reject service with authorized actor checks | 2026-11-23 | 2026-11-23 |
| Test missing consent, unauthorized approver and expired proposals | 2026-11-26 | 2026-11-26 |
| Review policy documentation; light mids session | 2026-11-30 | 2026-11-30 |
| Prepare deployment environment inventory; light session | 2026-12-03 | 2026-12-03 |
| Review safety test cases; light mids session | 2026-12-07 | 2026-12-07 |
| Draft Docker/health-check requirements without inventing services | 2026-12-10 | 2026-12-10 |
| Implement transactional service request and booking executor | 2026-12-14 | 2026-12-14 |
| Test duplicate execution and competing booking requests | 2026-12-17 | 2026-12-17 |
| Connect live data revalidation and workflow adapter | 2026-12-21 | 2026-12-21 |
| Verify changed prices/slots invalidate stale consent/approval | 2026-12-24 | 2026-12-24 |
| Complete Compose with explicit profile selection and isolated demo setup | 2026-12-28 | 2026-12-28 |
| Run API/auth/worker smoke checks for Profiles A/B without core edits | 2026-12-31 | 2026-12-31 |
| Test recovery at execution boundaries and inspect receipts | 2027-01-04 | 2027-01-04 |
| Freeze backend execution; record deployment and safety evidence | 2027-01-07 | 2027-01-07 |
| Verify setup from clean checkout and documented commands | 2027-01-11 | 2027-01-11 |
| Rehearse approval failure demo; finalize deployment handoff | 2027-01-14 | 2027-01-14 |
| List generic user journeys and profile/capability fields needed by screens | 2026-10-26 | 2026-10-26 |
| Sketch chat, approval and trace screens against shared samples | 2026-10-29 | 2026-10-29 |
| Define overview count response and status meanings | 2026-11-02 | 2026-11-02 |
| Write small aggregation function with synthetic fixture tests | 2026-11-05 | 2026-11-05 |
| Implement protected read-only overview endpoint | 2026-11-09 | 2026-11-09 |
| Test counts, empty data and denied access using agreed backend adapter | 2026-11-12 | 2026-11-12 |
| Prepare frontend component plan and mock response fixtures | 2026-11-16 | 2026-11-16 |
| Define waiting/error/loading and approval-confirmation behavior | 2026-11-19 | 2026-11-19 |
| Specify API client contract and frontend acceptance cases | 2026-11-23 | 2026-11-23 |
| Review mock events for each supported demo journey | 2026-11-26 | 2026-11-26 |
| Review Chapter 4 interface requirements; light mids session | 2026-11-30 | 2026-11-30 |
| Check accessible labels and Urdu layout requirements; light session | 2026-12-03 | 2026-12-03 |
| Review screen flow and sample API data; light mids session | 2026-12-07 | 2026-12-07 |
| Resolve documented contract questions and small overview defects | 2026-12-10 | 2026-12-10 |
| Finalize configurable labels | Asad-W07-B | 1 |
| Verify overview endpoint against available real data models | 2026-12-17 | 2026-12-17 |
| Verify backend APIs match frontend fixtures | 2026-12-21 | 2026-12-21 |
| Prepare concise AI implementation brief and frontend test plan | 2026-12-24 | 2026-12-24 |
| Generate/build frontend foundation and demo chat using AI assistance | 2026-12-28 | 2026-12-28 |
| Connect API client, login/session flow and conversation display | 2026-12-31 | 2026-12-31 |
| Build approval and basic inspector screens; connect real APIs | 2027-01-04 | 2027-01-04 |
| Verify consent, approvals, REST recovery and capability-aware UI; add frontend CI | 2027-01-07 | 2027-01-07 |

| Task | Start | Finish |
| --- | --- | --- |
| Run user journeys from clean setup and correct UI defects | 2027-01-11 | 2027-01-11 |
| Rehearse complete demo and supply verified Chapter 4 screenshots | 2027-01-14 | 2027-01-14 |
| Define generic customer/catalog/resource records and two synthetic profile datasets | 2026-10-26 | 2026-10-26 |
| Create report outline, submission inventory and supervisor questions | 2026-10-29 | 2026-10-29 |
| Implement generic customer/catalog/resource/status tables and profile-scoped seed fixtures | 2026-11-02 | 2026-11-02 |
| Provide read adapters plus reusable sample records and tests | 2026-11-05 | 2026-11-05 |
| Build Support worker with a fake retrieval adapter | 2026-11-09 | 2026-11-09 |
| Test evidence references, missing status facts and escalation | 2026-11-12 | 2026-11-12 |
| Build Sales worker calling the quote interface | 2026-11-16 | 2026-11-16 |
| Test valid service proposal and no invented price behavior | 2026-11-19 | 2026-11-19 |
| Build Scheduling worker using availability interface | 2026-11-23 | 2026-11-23 |
| Test proposed slots and lack of premature booking confirmation | 2026-11-26 | 2026-11-26 |
| Review literature sources and citations; light mids session | 2026-11-30 | 2026-11-30 |
| Organize actual meeting notes and report gaps; no invented meetings | 2026-12-03 | 2026-12-03 |
| Draft feasibility estimates with labelled assumptions; light session | 2026-12-07 | 2026-12-07 |
| Review SDG evidence needs and update schedule assumptions | 2026-12-10 | 2026-12-10 |
| Connect reusable workers to profile-scoped retrieval and read adapters | 2026-12-14 | 2026-12-14 |
| Verify structured proposals in shared contract tests | 2026-12-17 | 2026-12-17 |
| Add limited English/Roman Urdu/Urdu scenario fixtures | 2026-12-21 | 2026-12-21 |
| Review uncertainty, conflicts and clarification responses | 2026-12-24 | 2026-12-24 |
| Run worker suite for Profiles A/B | shizza-W09-B | 1 |
| Assemble Chapters 1–4 draft and trace claims to evidence | 2026-12-31 | 2026-12-31 |
| Review full demo; fix domain/data defects | 2027-01-04 | 2027-01-04 |
| Complete report draft and checklist; request supervisor review | 2027-01-07 | 2027-01-07 |
| Apply received feedback and reconcile report with actual build | 2027-01-11 | 2027-01-11 |
| Finalize report package, pending signatures list and demo evidence | 2027-01-14 | 2027-01-14 |

## Version 2 (saved 2026-10-27)

Note of the change: w01a: add schema/contract definitions and sample payloads

Last finish stays 2027-01-14.

Added:

| Task | Start | Finish |
| --- | --- | --- |
| Verify profile-scoped retrieval, source IDs and no-evidence behavior | 2026-11-19 | 2026-11-19 |

Removed: Verify profile-scoped retrieval
